# KinoProjectPlan

Schedule from MS Project, 2010-05-30 to 2010-09-01, 10 hours a day.

## Calendars

- Standard: Mon-Thu 10:00-13:00, 13:00-20:00; Fri-Sat off; Sun 10:00-13:00, 13:00-20:00.

## Resources

| Resource |
| --- |
| Or |
| Opher |
| Nice-to-have |

## Schedule

| ID | WBS | Task | Type | Duration | Start | Finish | Predecessors | Total slack | Free slack | Constraint | Resources | Work |
| --- | --- | --- | --- | --- | --- | --- | --- | --- | --- | --- | --- | --- |
| 1 | 1 | **Research** |  | 2d | 2010-05-30 | 2010-05-31 |  | 49.2d |  |  |  | 30h |
| 2 | 1.1 | what actions are possible when device is locked? |  | 1d | 2010-05-30 | 2010-05-30 |  | 50.2d | 2d |  | Opher | 10h |
| 3 | 1.2 | What kinds of physical input can we intercept? |  | 2d | 2010-05-30 | 2010-05-31 |  | 49.2d | 1d |  | Opher | 20h |
| 4 | 2 | POC - Intercept physical input |  | 3d | 2010-06-02 | 2010-06-06 | 2, 3 | 48.2d | 0d | start no earlier than 2010-06-02 | Opher | 30h |
| 5 | 3 | DEADLINE: Project alpha | milestone | 0d | 2010-06-17 | 2010-06-17 | 4 | 54d |  | start no earlier than 2010-06-17 |  |  |
| 6 | 4 | **Software Design** |  | 7d | 2010-05-30 | 2010-06-07 |  | 48.2d |  |  |  | 15h |
| 7 | 4.1 | Components communication design |  | 1h | 2010-05-30 | 2010-05-30 |  | 54.1d | 5.9d |  | Or | 1h |
| 8 | 4.2 | Where files are stored? Media and configuration |  | 1h | 2010-05-30 | 2010-05-30 |  | 54.1d | 5.9d |  | Or | 1h |
| 9 | 4.3 | Decide on desired functionality |  | 3h | 2010-05-30 | 2010-05-30 |  | 53.9d | 5.7d |  | Or | 3h |
| 10 | 4.4 | Wrap up software design |  | 1d | 2010-06-07 | 2010-06-07 | 7, 8, 9, 4 | 48.2d | 0d |  | Or | 10h |
| 11 | 5 | **UI Design** |  | 3d | 2010-06-07 | 2010-06-10 |  | 47d |  |  |  | 10h |
| 12 | 5.1 | Design UI + paper prototype |  | 1d | 2010-06-07 | 2010-06-07 | 10SS | 49d | 3d |  | Opher | 10h |
| 13 | 5.2 | DEADLINE: Project scenarios/flows + Paper prototypes | milestone | 0d | 2010-06-10 | 2010-06-10 | 12SS | 46.2d | 0d | start no earlier than 2010-06-10 |  |  |
| 14 | 6 | Ready to implement! | milestone | 0d | 2010-06-10 | 2010-06-10 | 10, 13 | 46.2d | 0d |  |  |  |
| 15 | 7 | **Implementation** |  | 43.8d | 2010-06-10 | 2010-08-10 | 14 | 15.2d |  |  |  | 384h |
| 16 | 7.1 | MediaPlayer - critical functions only |  | 8h | 2010-06-10 | 2010-06-10 |  | 46.2d | 20.7d |  | Or | 8h |
| 17 | 7.2 | Playlist - critical functions only |  | 5h | 2010-07-11 | 2010-07-11 | 14 | 25.5d | 0d | start no earlier than 2010-06-13 | Opher | 5h |
| 18 | 7.3 | MediaProperties - only song title and media duration |  | 5h | 2010-07-11 | 2010-07-11 | 14 | 25.5d | 0d | start no earlier than 2010-06-13 | Opher | 5h |
| 19 | 7.4 | MediaPlayerUI |  | 4d | 2010-07-11 | 2010-07-15 | 16, 17, 18, 12 | 25.5d | 0d |  | Opher | 40h |
| 20 | 7.5 | Working media player | milestone | 0d | 2010-07-15 | 2010-07-15 | 19 | 28.5d | 4.3d |  |  |  |
| 21 | 7.6 | MediaBrowser - only ABC browser |  | 3d | 2010-07-15 | 2010-07-20 | 12, 14 | 22.5d | 7.3d | start no earlier than 2010-07-15 | Opher | 30h |
| 22 | 7.7 | SettingsContainer - app using only default settings |  | 8h | 2010-07-20 | 2010-07-20 | 14 | 19.2d | 0d | start no earlier than 2010-07-15 | Or | 8h |
| 23 | 7.8 | KeyboardInputInterceptor |  | 8h | 2010-07-20 | 2010-07-20 | 14 | 24.2d | 0d | start no earlier than 2010-07-15 | Or | 8h |
| 24 | 7.9 | InputEventTranslator |  | 1d | 2010-07-20 | 2010-07-21 | 16, 23, 22 | 24.2d | 0d |  | Or | 10h |
| 25 | 7.10 | Statically configured media player | milestone | 0d | 2010-07-21 | 2010-07-21 | 24, 20 | 24.2d | 0.7d |  |  |  |
| 26 | 7.11 | TapInterceptor |  | 2d | 2010-07-20 | 2010-07-22 | 14 | 23.5d | 0d | start no earlier than 2010-07-20 | Opher | 20h |
| 27 | 7.12 | DirectionTapInterceptor |  | 2d | 2010-07-22 | 2010-07-26 | 14 | 26.5d |  | start no earlier than 2010-07-22 | Opher | 20h |
| 28 | 7.13 | FlickInterceptor |  | 2d | 2010-07-26 | 2010-07-28 | 14 | 24.5d |  | start no earlier than 2010-07-26 | Opher | 20h |
| 29 | 7.14 | VoiceInterceptor |  | 5d | 2010-07-20 | 2010-07-27 | 14 | 25.5d |  | start no earlier than 2010-07-20 | Nice-to-have | 50h |
| 30 | 7.15 | Physical input media player! | milestone | 0d | 2010-07-22 | 2010-07-22 | 26, 25 | 23.5d | 7.3d |  |  |  |
| 31 | 7.16 | SettingsProfile - already include 2 profiles: Driving & Jogging |  | 2d | 2010-07-21 | 2010-07-25 | 22 | 18.2d | 0d | start no earlier than 2010-07-21 | Or | 20h |
| 32 | 7.17 | SettingsActivity |  | 4d | 2010-07-25 | 2010-07-29 | 31 | 18.2d | 0d |  | Or | 40h |
| 33 | 7.18 | Configurable media player | milestone | 0d | 2010-07-29 | 2010-07-29 | 32 | 18.2d | 2d |  |  |  |
| 34 | 7.19 | Complete MediaPlayer |  | 1d | 2010-07-29 | 2010-08-01 | 16 | 17.2d | 1d | start no earlier than 2010-07-29 | Or | 10h |
| 35 | 7.20 | Complete Playlist |  | 1d | 2010-08-01 | 2010-08-02 | 17 | 16.2d | 0d | start no earlier than 2010-08-01 | Or | 10h |
| 36 | 7.21 | Almost completely functional media player! | milestone | 0d | 2010-08-02 | 2010-08-02 | 34, 35, 21, 20 | 16.2d | 0d |  |  |  |
| 37 | 7.22 | Barely marketable version | milestone | 0d | 2010-08-02 | 2010-08-02 | 36, 33, 30 | 16.2d | 1d |  |  |  |
| 38 | 7.23 | Complete MediaProperties - including integration with UI (title display, browsing…) |  | 3d | 2010-07-29 | 2010-08-03 | 18, 19, 21 | 15.2d | 0d | start no earlier than 2010-07-29 | Opher | 30h |
| 39 | 7.24 | Nice marketable version | milestone | 0d | 2010-08-03 | 2010-08-03 | 37, 38 | 15.2d | 0d |  |  |  |
| 40 | 7.25 | Complete all nice-to-have features |  | 1w | 2010-08-03 | 2010-08-10 | 39 | 15.2d |  |  | Or | 50h |
| 41 | 8 | Prepare presentation |  | 2d | 2010-08-10 | 2010-08-12 | 20 | 13.2d |  | start no earlier than 2010-08-10 | Opher; Or | 40h |
| 42 | 9 | DEADLINE: Project presentation | milestone | 0d | 2010-09-01 | 2010-09-01 | 30, 41 | 0d |  | start no earlier than 2010-09-01 |  |  |
